# rio_2015_plan_20150519

Schedule from MS Project, 2014-06-25 to 2015-07-07.

## Calendars

- Standard: Mon-Fri 08:00-12:00, 13:00-17:00; Sat-Sun off. Exceptions (off unless hours are given): 2015-04-25 08:00-12:00, 13:00-17:00 (L&S Cutover), 2015-04-26 08:00-12:00, 13:00-17:00 (L&S Cutover contingency), 2015-06-06 08:00-12:00, 13:00-17:00 (Merge Cutover to single instance), 2015-06-07 08:00-12:00, 13:00-17:00 (Merge Cutover to single instance contingency).

## Resources

| Resource |
| --- |
| Servelec |
| BEH |
| IMT Project Manager |
| CSR Transformation Manager |
| Service Manager |
| Project Board |
| Transformation Lead |
| PRDG |
| Services |
| Project Support |
| Transformation Manager |
| Configuration Team |
| Workshop attendees |
| Training Lead |
| IT Infrastructure Lead |
| Testing Lead |
| HP |
| IMT Change Manager |

## Schedule

| ID | WBS | Task | Type | Duration | Start | Finish | Predecessors | Baseline start | Baseline finish | Baseline duration | Total slack |
| --- | --- | --- | --- | --- | --- | --- | --- | --- | --- | --- | --- |
| 1 | 1 | **STAGE1 - PREPARATION & START-UP** |  | 39d | 2014-10-20 | 2014-12-12 |  | 2014-10-20 | 2014-12-12 | 39d | 0d |
| 2 | 1.1 | **TECHNICAL INFRASTRUCTURE** |  | 1d | 2014-10-20 | 2014-10-21 |  | 2014-10-20 | 2014-10-21 | 1d |  |
| 3 | 1.1.1 | Scope and plan Technical Infrastructure workstream and develop high level workstream activity plan | manual | 1d | 2014-10-20 | 2014-10-21 |  | 2014-10-20 | 2014-10-21 | 1d |  |
| 4 | 1.1.2 | Review Servelec documentation | manual | 1d | 2014-10-20 | 2014-10-21 |  | 2014-10-20 | 2014-10-21 | 1d |  |
| 5 | 1.1.3 | Develop High Level Technical Infrastructure Strategy | manual | 1d | 2014-10-20 | 2014-10-21 |  | 2014-10-20 | 2014-10-21 | 1d |  |
| 6 | 1.1.4 | Review and approve High Level Technical Infrastructure Strategy | manual | 1d | 2014-10-20 | 2014-10-21 |  | 2014-10-20 | 2014-10-21 | 1d |  |
| 7 | 1.1.5 | High Level Technical Strategy Approved | manual | 1d | 2014-10-20 | 2014-10-21 |  | 2014-10-20 | 2014-10-21 | 1d |  |
| 8 | 1.2 | End of Stage Review - Stage 1 | manual | 1d | 2014-10-20 | 2014-10-21 |  | 2014-10-20 | 2014-10-21 | 1d |  |
| 9 | 1.3 | Stage 1 - Preparation & Start-Up complete | milestone, manual | 0d | 2014-12-12 | 2014-12-12 |  | 2014-12-12 | 2014-12-12 | 0d |  |
| 10 | 2 | **STAGE 2 PRE-DEPLOYMENT PREPARATION** |  | 28d | 2014-06-25 | 2014-08-04 |  | 2014-06-25 | 2014-08-04 | 28d | 0d |
| 11 | 2.1 | **Interim Environment** |  | 28d | 2014-06-25 | 2014-08-01 |  | 2014-06-25 | 2014-08-01 | 28d |  |
| 12 | 2.1.1 | Anonymistation script provided to Trust | manual | 1d | 2014-06-25 | 2014-06-25 |  | 2014-06-25 | 2014-06-25 | 1d |  |
| 13 | 2.1.2 | IM Team run anonymisation script on MH and CH databases | manual | 1d | 2014-06-25 | 2014-06-26 |  | 2014-06-25 | 2014-06-26 | 1d |  |
| 14 | 2.1.3 | Anonymised extracts ready for copy onto secure HDD | manual | 1d | 2014-06-25 | 2014-06-26 |  | 2014-06-25 | 2014-06-26 | 1d |  |
| 15 | 2.1.4 | Change request to HP for copy of anonymised DB extracts from IM server in Wynyard Datacentre onto secure HDD and hand over to courier for onward transport to Servelec | manual | 1d | 2014-06-25 | 2014-06-26 |  | 2014-06-25 | 2014-06-26 | 1d |  |
| 16 | 2.1.5 | HP copy extracts onto secure HDD and handover to courier for onward delivery to Servelec | manual | 1d | 2014-06-25 | 2014-06-26 |  | 2014-06-25 | 2014-06-26 | 1d |  |
| 17 | 2.1.6 | Anonymised extracts of MH and CH data bases provided to Servelec | manual | 1d | 2014-07-15 | 2014-07-15 |  | 2014-07-15 | 2014-07-15 | 1d |  |
| 18 | 2.1.7 | Servelec confirm delivery of anonymised extracts and load onto Interim Environment | manual | 1d | 2014-06-25 | 2014-06-26 |  | 2014-06-25 | 2014-06-26 | 1d |  |
| 19 | 2.1.8 | Change request to HP to open up firewalls for connection to Interim Environment | manual | 1d | 2014-06-25 | 2014-06-26 |  | 2014-06-25 | 2014-06-26 | 1d |  |
| 20 | 2.1.9 | Interim Environment remote installation & test) | manual | 10d | 2014-07-07 | 2014-07-18 |  | 2014-07-07 | 2014-07-18 | 10d |  |
| 21 | 2.1.10 | Set up Mental Health & Community Health Instances (with BEH anonymised extracts) | manual | 5d | 2014-07-28 | 2014-08-01 |  | 2014-07-28 | 2014-08-01 | 5d |  |
| 22 | 2.1.11 | Create Interim Environment Product Description (including Acceptance Criteria and Acceptance Testing) | manual | 1d | 2014-06-25 | 2014-06-26 |  | 2014-06-25 | 2014-06-26 | 1d |  |
| 23 | 2.1.12 | Review & Approve Interim Environment Product Description (Trust) | manual | 1d | 2014-06-25 | 2014-06-26 |  | 2014-06-25 | 2014-06-26 | 1d |  |
| 24 | 2.1.13 | Review & Approve Interim Environment Product Description (Servelec) | manual | 1d | 2014-06-25 | 2014-06-26 |  | 2014-06-25 | 2014-06-26 | 1d |  |
| 25 | 2.1.14 | Interim Environment Product Description Document Approved | manual | 1d | 2014-06-25 | 2014-06-26 |  | 2014-06-25 | 2014-06-26 | 1d |  |
| 26 | 2.1.15 | Create Interim Environment Approval Document | manual | 1d | 2014-06-25 | 2014-06-26 |  | 2014-06-25 | 2014-06-26 | 1d |  |
| 27 | 2.1.16 | Sign Interim Environment Approval Document | manual | 1d | 2014-06-25 | 2014-06-26 |  | 2014-06-25 | 2014-06-26 | 1d |  |
| 28 | 2.1.17 | Send Signed Interim Environment Approval Document to Servelec | manual | 1d | 2014-06-25 | 2014-06-26 |  | 2014-06-25 | 2014-06-26 | 1d |  |
| 29 | 2.1.18 | Interim Environment complete | milestone, manual | 0d | 2014-08-01 | 2014-08-01 |  | 2014-08-01 | 2014-08-01 | 0d |  |
| 30 | 2.2 | End of Stage Review - STAGE 2 | manual | 1d | 2014-08-01 | 2014-08-04 | 29 | 2014-08-01 | 2014-08-04 | 1d |  |
| 31 | 2.3 | Stage 2 - Pre-Deployment Preparation Complete | milestone, manual | 0d | 2014-08-04 | 2014-08-04 | 30 | 2014-08-04 | 2014-08-04 | 0d |  |

| ID | WBS | Task | Type | Duration | Start | Finish | Predecessors | Baseline start | Baseline finish | Baseline duration | Total slack | Free slack | Constraint | Resources | Work |
| --- | --- | --- | --- | --- | --- | --- | --- | --- | --- | --- | --- | --- | --- | --- | --- |
| 32 | 3 | **STAGE 3 - DESIGN** |  | 85d | 2014-11-03 | 2015-03-02 |  | 2014-11-03 | 2015-03-02 | 85d | 2d |  |  |  | 1304h |
| 33 | 3.1 | **PLANNING & MANAGEMENT** |  | 1d | 2014-11-05 | 2014-11-06 |  | 2014-11-05 | 2014-11-06 | 1d |  |  |  |  | 56h |
| 34 | 3.1.1 | BT Exit Meeting with HSCIC | manual | 1d | 2014-11-05 | 2014-11-05 |  | 2014-11-05 | 2014-11-05 | 1d |  |  |  | IMT Project Manager; CSR Transformation Manager; Service Manager | 24h |
| 35 | 3.1.2 | Review Transition / Go Live options and costs (ie 'Lift and Shift' then Data Merge) | manual | 1d | 2014-11-05 | 2014-11-06 |  | 2014-11-05 | 2014-11-06 | 1d |  |  |  | IMT Project Manager | 8h |
| 36 | 3.1.3 | Develop options paper for review and decision | manual | 1d | 2014-11-05 | 2014-11-06 |  | 2014-11-05 | 2014-11-06 | 1d |  |  |  | IMT Project Manager | 8h |
| 37 | 3.1.4 | Decide Transition / Go Live option | manual | 1d | 2014-11-05 | 2014-11-06 |  | 2014-11-05 | 2014-11-06 | 1d |  |  |  | Project Board | 8h |
| 38 | 3.1.5 | Transition / Go Live option confirmed | manual | 1d | 2014-11-05 | 2014-11-06 |  | 2014-11-05 | 2014-11-06 | 1d |  |  |  |  |  |
| 39 | 3.1.6 | Develop detailed plans for Stages 4, 5, 6 & 7 depending on preferred Transition / Go Live option | manual | 1d | 2014-11-05 | 2014-11-06 |  | 2014-11-05 | 2014-11-06 | 1d |  |  |  | IMT Project Manager | 8h |
| 40 | 3.1.7 | PLANNING & MANAGEMENT complete | milestone, manual | 0d | 2014-11-05 | 2014-11-05 |  | 2014-11-05 | 2014-11-05 | 0d |  |  |  |  |  |
| 41 | 3.2 | **TECHNICAL INFRASTRUCTURE** |  | 84d | 2014-11-03 | 2015-02-27 |  | 2014-11-03 | 2015-02-27 | 84d | 77.4d |  |  |  | 1248h |
| 42 | 3.2.1 | **Technical Infrastructure Specification Design** |  | 84d | 2014-11-03 | 2015-02-27 |  | 2014-11-03 | 2015-02-27 | 84d | 77.4d |  |  |  | 1248h |
| 43 | 3.2.1.1 | Identify changes to WES to meet OpenRiO requirements |  | 4d | 2014-11-03 | 2014-11-07 |  | 2014-11-03 | 2014-11-07 | 4d | 77.4d | 0d | start no earlier than 2014-11-03 | IT Infrastructure Lead | 32h |
| 44 | 3.2.1.2 | Create draft Technical Infrastructure specification |  | 5d | 2014-11-07 | 2014-11-14 | 43 | 2014-11-07 | 2014-11-14 | 5d | 77.4d | 0d |  | IT Infrastructure Lead | 40h |
| 45 | 3.2.1.3 | Conduct Technical Infrastructure specification review with HP Senior Technical Architect |  | 4d | 2014-11-14 | 2014-11-20 | 44 | 2014-11-14 | 2014-11-20 | 4d | 77.4d | 0d |  | IT Infrastructure Lead; HP | 64h |
| 46 | 3.2.1.4 | Create NSSR for infrastructure changes |  | 1d | 2014-11-20 | 2014-11-21 | 45 | 2014-11-20 | 2014-11-21 | 1d | 77.4d | 0d |  | IT Infrastructure Lead | 8h |
| 47 | 3.2.1.5 | Technical Infrastructure Specification Design complete | milestone | 0d | 2014-11-21 | 2014-11-21 | 46 | 2014-11-21 | 2014-11-21 | 0d | 147.4d | 70d |  |  |  |
| 48 | 3.2.1.6 | **High-Level HP Impact Assessment** |  | 4d | 2014-11-21 | 2014-11-27 |  | 2014-11-21 | 2014-11-27 | 4d | 77.4d |  |  |  | 72h |
| 49 | 3.2.1.6.1 | Process NSSR for high-level Impact Assessment (IA) |  | 3d | 2014-11-21 | 2014-11-26 | 46 | 2014-11-21 | 2014-11-26 | 3d | 77.4d | 0d |  | HP; IMT Change Manager | 48h |
| 50 | 3.2.1.6.2 | Review HP IA |  | 1d | 2014-11-26 | 2014-11-27 | 49 | 2014-11-26 | 2014-11-27 | 1d | 77.4d | 0d |  | IMT Change Manager; IT Infrastructure Lead; IMT Project Manager | 24h |
| 51 | 3.2.1.6.3 | High-Level HP Impact Assessment & infrastructure costs ready for Board review | milestone | 0d | 2014-11-27 | 2014-11-27 | 50 | 2014-11-27 | 2014-11-27 | 0d | 77.4d | 0d |  |  |  |
| 52 | 3.2.1.7 | **Detailed HP Impact Assessment** |  | 66d | 2014-11-27 | 2015-02-27 |  | 2014-11-27 | 2015-02-27 | 66d | 77.4d |  |  |  | 1032h |
| 53 | 3.2.1.7.1 | Update IA following review |  | 1d | 2014-11-27 | 2014-11-28 | 51 | 2014-11-27 | 2014-11-28 | 1d | 77.4d | 0d |  | IT Infrastructure Lead | 8h |
| 54 | 3.2.1.7.2 | Process NSSR for detailed Impact Assessment (IA) |  | 55d | 2014-11-28 | 2015-02-13 | 53 | 2014-11-28 | 2015-02-13 | 55d | 77.4d | 0d |  | HP; IMT Change Manager | 880h |
| 55 | 3.2.1.7.3 | Review HP IA |  | 4d | 2015-02-13 | 2015-02-19 | 54 | 2015-02-13 | 2015-02-19 | 4d | 77.4d | 0d |  | IMT Change Manager; IT Infrastructure Lead; IMT Project Manager | 96h |
| 56 | 3.2.1.7.4 | Detailed HP Impact Assessment & infrastructure costs ready for Board review | milestone | 0d | 2015-02-19 | 2015-02-19 | 55 | 2015-02-19 | 2015-02-19 | 0d | 77.4d | 0d |  |  |  |
| 57 | 3.2.1.7.5 | Review NSSR0288 by Board |  | 6d | 2015-02-19 | 2015-02-27 | 56 | 2015-02-19 | 2015-02-27 | 6d | 77.4d | 0d |  | Project Board | 48h |
| 58 | 3.2.1.7.6 | NSSR0288 for OpenRio technical infrastructure signed off | milestone | 0d | 2015-02-27 | 2015-02-27 | 57 | 2015-02-27 | 2015-02-27 | 0d | 77.4d | 0d |  | Project Board |  |
| 59 | 3.2.1.8 | Technical Infrastructure Specification Design complete | milestone | 0d | 2015-02-27 | 2015-02-27 | 54, 58 | 2015-02-27 | 2015-02-27 | 0d | 77.4d | 0d |  |  |  |
| 60 | 3.3 | End of Stage Review - STAGE 3 |  | 1d | 2015-02-27 | 2015-03-02 | 40, 59, 51, 47 | 2015-02-27 | 2015-03-02 | 1d | 77.4d | 0d |  |  |  |
| 61 | 3.4 | STAGE 3 - DESIGN complete | milestone | 0d | 2015-03-02 | 2015-03-02 | 60 | 2015-03-02 | 2015-03-02 | 0d | 77.4d | 0d |  |  |  |

| ID | WBS | Task | Type | Duration | Start | Finish | Predecessors | Baseline start | Baseline finish | Baseline duration | Total slack | Free slack | Constraint | Resources | Work |
| --- | --- | --- | --- | --- | --- | --- | --- | --- | --- | --- | --- | --- | --- | --- | --- |
| 62 | 4 | **STAGE 4 - DEVELOPMENT AND TESTING** |  | 91.12d | 2014-12-15 | 2015-04-21 |  | 2014-12-15 | 2015-04-20 | 90.12d | 55.12d |  |  |  | 530.4h |
| 63 | 4.1 | Trust-wide Change Freeze | milestone | 16d | 2014-12-15 | 2015-01-05 |  | 2014-12-15 | 2015-01-05 | 16d | 134.12d |  | finish no earlier than 2015-01-05 |  |  |
| 64 | 4.2 | **TECHNICAL INFRASTRUCTURE** |  | 62d | 2015-01-23 | 2015-04-21 |  | 2015-01-23 | 2015-04-20 | 61d | 26d |  |  |  | 530.4h |
| 65 | 4.2.1 | **TECHNICAL INFRASTRUCTURE - L&S Development** |  | 62d | 2015-01-23 | 2015-04-21 |  | 2015-01-23 | 2015-04-20 | 61d | 26d |  |  |  | 471.2h |
| 66 | 4.2.1.1 | **LIFT AND SHIFT HOSTED ENVIRONMENT** |  | 33d | 2015-01-23 | 2015-03-11 |  | 2015-01-23 | 2015-03-11 | 33d | 26d |  |  |  | 280h |
| 67 | 4.2.1.1.1 | Provide all Trust's N3 router IP addresses for local break-out contingency | manual | 1d | 2015-03-02 | 2015-03-03 | 61 | 2015-03-02 | 2015-03-03 | 1d |  |  |  | IT Infrastructure Lead | 8h |
| 68 | 4.2.1.1.2 | Obtain copy of databases & documents from BT |  | 3d | 2015-01-23 | 2015-01-28 |  | 2015-01-23 | 2015-01-28 | 3d | 74.4d | 0d | start no earlier than 2015-01-23 | Servelec | 24h |
| 69 | 4.2.1.1.3 | Load data and documents (Servelec) |  | 1d | 2015-01-28 | 2015-01-29 | 68 | 2015-01-28 | 2015-01-29 | 1d | 117d |  |  | Servelec | 8h |
| 70 | 4.2.1.1.4 | Set up databases (Live, Test & Train Instances) (Servelec) |  | 29d | 2015-01-28 | 2015-03-10 | 68 | 2015-01-28 | 2015-03-10 | 29d | 74.4d | 0d |  | Servelec | 232h |
| 71 | 4.2.1.1.5 | Connect Sandpit Spine (Spine2 DEP) |  | 1d | 2015-03-10 | 2015-03-11 | 70 | 2015-03-10 | 2015-03-11 | 1d | 74.4d | 0d |  | Servelec | 8h |
| 72 | 4.2.1.1.6 | Hosted Environment Ready for Lift and Shift Testing | milestone | 0d | 2015-03-11 | 2015-03-11 | 71 | 2015-03-11 | 2015-03-11 | 0d | 74.4d | 0d |  |  |  |
| 73 | 4.2.1.2 | **LIFT AND SHIFT WARRANTED ENVIRONMENT** |  | 36d | 2015-03-02 | 2015-04-21 |  | 2015-03-02 | 2015-04-20 | 35d | 59d |  |  |  | 191.2h |
| 74 | 4.2.1.2.1 | **Preparation** |  | 12d | 2015-03-02 | 2015-03-18 |  | 2015-03-02 | 2015-03-18 | 12d | 64.8d |  |  |  | 146.4h |
| 75 | 4.2.1.2.1.1 | Provide HP with relevant build guides from Servelec |  | 1d | 2015-03-02 | 2015-03-03 | 61 | 2015-03-02 | 2015-03-03 | 1d | 77.4d | 0d |  | IT Infrastructure Lead | 8h |
| 76 | 4.2.1.2.1.2 | **OpenRiO Icon Design** |  | 3d | 2015-03-03 | 2015-03-06 |  | 2015-03-03 | 2015-03-06 | 3d | 77.4d |  |  |  | 32h |
| 77 | 4.2.1.2.1.2.1 | Create icons for OpenRiO 7 |  | 2d | 2015-03-03 | 2015-03-05 | 75 | 2015-03-03 | 2015-03-05 | 2d | 77.4d | 0d |  | IT Infrastructure Lead | 16h |
| 78 | 4.2.1.2.1.2.2 | Review & sign-off icons with SM team |  | 1d | 2015-03-05 | 2015-03-06 | 77 | 2015-03-05 | 2015-03-06 | 1d | 77.4d | 0d |  | IMT Project Manager; IT Infrastructure Lead | 16h |
| 79 | 4.2.1.2.1.2.3 | OpenRiO Icon Design complete | milestone | 0d | 2015-03-06 | 2015-03-06 | 78 | 2015-03-06 | 2015-03-06 | 0d | 91d |  |  |  |  |
| 80 | 4.2.1.2.1.3 | Provide icons to HP |  | 0.2d | 2015-03-06 | 2015-03-06 | 78 | 2015-03-06 | 2015-03-06 | 0.2d | 77.4d | 3d |  | IT Infrastructure Lead | 1.6h |
| 81 | 4.2.1.2.1.4 | Raise urgent Change Requests for URL access (FW, DNS) |  | 0.2d | 2015-03-05 | 2015-03-05 |  | 2015-03-05 | 2015-03-05 | 0.2d | 78.2d | 3.8d | start no earlier than 2015-03-05 | HP | 1.6h |
| 82 | 4.2.1.2.1.5 | Raise urgent Change Requests for Pilot |  | 0.2d | 2015-03-11 | 2015-03-11 |  | 2015-03-11 | 2015-03-11 | 0.2d | 82.7d | 8.3d | start no earlier than 2015-03-11 | HP | 1.6h |
| 83 | 4.2.1.2.1.6 | Raise urgent Change Requests for Full Deployment |  | 0.2d | 2015-03-11 | 2015-03-11 |  | 2015-03-11 | 2015-03-11 | 0.2d | 57.8d | 6.8d | start no earlier than 2015-03-11 | HP | 1.6h |
| 84 | 4.2.1.2.1.7 | Re-image UAT PCs x6 |  | 3d | 2015-03-09 | 2015-03-12 |  | 2015-03-09 | 2015-03-12 | 3d | 87d |  | start no earlier than 2015-03-09 | HP | 24h |
| 85 | 4.2.1.2.1.8 | Identify pilot users for WES component testing |  | 2d | 2015-03-11 | 2015-03-13 |  | 2015-03-11 | 2015-03-13 | 2d | 77.9d | 0d | start no earlier than 2015-03-11 | IMT Project Manager | 16h |
| 86 | 4.2.1.2.1.9 | Request host names from pilot users |  | 3d | 2015-03-13 | 2015-03-18 | 85 | 2015-03-13 | 2015-03-18 | 3d | 77.9d | 0d |  | IT Infrastructure Lead | 24h |
| 87 | 4.2.1.2.1.10 | Pilot users' host names provided to HP ready for deployment | milestone | 0d | 2015-03-18 | 2015-03-18 | 86 | 2015-03-18 | 2015-03-18 | 0d | 77.9d | 3.5d |  | IT Infrastructure Lead |  |

| ID | WBS | Task | Type | Duration | Start | Finish | Predecessors | Baseline start | Baseline finish | Baseline duration | Total slack | Free slack | Constraint | Resources | Work |
| --- | --- | --- | --- | --- | --- | --- | --- | --- | --- | --- | --- | --- | --- | --- | --- |
| 88 | 4.2.1.2.1.11 | **End User Communications** |  | 2.5d | 2015-03-05 | 2015-03-09 |  | 2015-03-05 | 2015-03-09 | 2.5d | 89.5d |  |  |  | 36h |
| 89 | 4.2.1.2.1.11.1 | Agree comms strategy |  | 2d | 2015-03-05 | 2015-03-09 |  | 2015-03-05 | 2015-03-09 | 2d | 89.5d | 0d | start no earlier than 2015-03-05 | HP; IMT Change Manager | 32h |
| 90 | 4.2.1.2.1.11.2 | Send out email comms to pilot users |  | 0.5d | 2015-03-09 | 2015-03-09 | 89 | 2015-03-09 | 2015-03-09 | 0.5d | 89.5d | 0d |  | BEH | 4h |
| 91 | 4.2.1.2.1.11.3 | Pilot User Communications complete | milestone | 0d | 2015-03-09 | 2015-03-09 | 90 | 2015-03-09 | 2015-03-09 | 0d | 89.5d |  |  |  |  |
| 92 | 4.2.1.2.2 | **Development** |  | 28.8d | 2015-03-11 | 2015-04-21 |  | 2015-03-11 | 2015-04-20 | 27.8d | 59d |  |  |  | 44.8h |
| 93 | 4.2.1.2.2.1 | **WES Desktop Component Software Packaging** |  | 7d | 2015-03-11 | 2015-03-20 |  | 2015-03-11 | 2015-03-18 | 5.4d | 74.4d |  |  |  | 40h |
| 94 | 4.2.1.2.2.1.1 | Manual installation of changes |  | 2d | 2015-03-11 | 2015-03-13 | 112, 80 | 2015-03-11 | 2015-03-11 | 0.4d | 74.4d | 0d |  | HP | 16h |
| 95 | 4.2.1.2.2.1.2 | Complete documentation (DIGS) for area of change |  | 2d | 2015-03-13 | 2015-03-17 | 94 | 2015-03-11 | 2015-03-13 | 2d | 74.4d | 0d |  |  |  |
| 96 | 4.2.1.2.2.1.3 | Package icon/shortcut |  | 1.5d | 2015-03-17 | 2015-03-18 | 95 | 2015-03-13 | 2015-03-17 | 1.5d | 74.4d | 0d |  | HP | 12h |
| 97 | 4.2.1.2.2.1.4 | Package DropZone reg keys |  | 1.5d | 2015-03-18 | 2015-03-20 | 96 | 2015-03-17 | 2015-03-18 | 1.5d | 74.4d | 0d |  | HP | 12h |
| 98 | 4.2.1.2.2.1.5 | WES Desktop Component Software Packaging ready for testing | milestone | 0d | 2015-03-20 | 2015-03-20 | 97 | 2015-03-18 | 2015-03-18 | 0d | 74.4d | 0d |  |  |  |
| 99 | 4.2.1.2.2.2 | **Trust Print Server Upgrade - Dry Run** |  | 0.8d | 2015-04-20 | 2015-04-21 |  | 2015-04-17 | 2015-04-20 | 0.8d | 55d |  |  |  | 4.8h |
| 100 | 4.2.1.2.2.2.1 | Implement Trust Printer Server configuration changes |  | 0.2d | 2015-04-20 | 2015-04-20 | 156SS-6d | 2015-04-17 | 2015-04-17 | 0.2d | 55d | 0d | start no earlier than 2014-06-02 | HP | 1.6h |
| 101 | 4.2.1.2.2.2.2 | Test Trust Printer Server configuration changes |  | 0.2d | 2015-04-20 | 2015-04-20 | 100 | 2015-04-17 | 2015-04-17 | 0.2d | 55d | 0d |  | Testing Lead | 1.6h |
| 102 | 4.2.1.2.2.2.3 | Roll-back Trust Printer Server configuration changes |  | 0.2d | 2015-04-20 | 2015-04-20 | 101 | 2015-04-17 | 2015-04-17 | 0.2d | 55d | 0d |  | HP | 1.6h |
| 103 | 4.2.1.2.2.2.4 | Update Trust Print Server Upgrade documentation |  | 0.2d | 2015-04-20 | 2015-04-21 | 102 | 2015-04-17 | 2015-04-20 | 0.2d | 55d | 0d |  |  |  |
| 104 | 4.2.1.2.2.2.5 | Trust Print Server Upgrade procedure proved | milestone | 0d | 2015-04-21 | 2015-04-21 | 103 | 2015-04-20 | 2015-04-20 | 0d | 55d | 0d |  |  |  |
| 105 | 4.2.1.2.2.3 | LIFT AND SHIFT WARRANTED ENVIRONMENT - Development ready for testing | milestone | 0d | 2015-04-21 | 2015-04-21 | 98, 104 | 2015-04-20 | 2015-04-20 | 0d | 59d | 0d |  |  |  |
| 106 | 4.2.1.3 | TECHNICAL INFRASTRUCTURE - L&S Development complete | milestone | 0d | 2015-04-21 | 2015-04-21 | 105, 72 | 2015-04-20 | 2015-04-20 | 0d | 59d |  |  |  |  |
| 107 | 4.2.2 | **TECHNICAL INFRASTRUCTURE - L&S Testing** |  | 16.6d | 2015-03-06 | 2015-03-30 |  | 2015-03-06 | 2015-03-26 | 14.7d | 74.4d |  |  |  | 59.2h |
| 108 | 4.2.2.1 | **System Testing** |  | 11.2d | 2015-03-06 | 2015-03-23 |  | 2015-03-06 | 2015-03-19 | 9.3d | 77.4d |  |  |  | 14.4h |
| 109 | 4.2.2.1.1 | **Network Connectivity Testing - Hosted Environment** |  | 5.2d | 2015-03-06 | 2015-03-13 |  | 2015-03-06 | 2015-03-13 | 5.2d | 77.4d |  |  |  | 6.4h |
| 110 | 4.2.2.1.1.1 | **LIVE Servelec URL Testing** |  | 3.2d | 2015-03-06 | 2015-03-11 |  | 2015-03-06 | 2015-03-11 | 3.2d | 74.4d |  |  |  | 3.2h |
| 111 | 4.2.2.1.1.1.1 | Availability of LIVE servers confirmed by Servelec | milestone | 0d | 2015-03-06 | 2015-03-06 |  | 2015-03-06 | 2015-03-06 | 0d | 77.4d | 0d | start no earlier than 2015-03-06 |  |  |
| 112 | 4.2.2.1.1.1.2 | Test network connectivity to Servelec hosted environment - LIVE |  | 0.2d | 2015-03-11 | 2015-03-11 | 81, 72, 111 | 2015-03-11 | 2015-03-11 | 0.2d | 74.4d | 0d |  | IT Infrastructure Lead; HP | 3.2h |

| ID | WBS | Task | Type | Duration | Start | Finish | Predecessors | Baseline start | Baseline finish | Baseline duration | Total slack | Free slack | Constraint | Resources | Work |
| --- | --- | --- | --- | --- | --- | --- | --- | --- | --- | --- | --- | --- | --- | --- | --- |
| 113 | 4.2.2.1.1.2 | **DR Servelec URL Testing** |  | 0.2d | 2015-03-13 | 2015-03-13 |  | 2015-03-13 | 2015-03-13 | 0.2d | 85.8d |  |  |  | 3.2h |
| 114 | 4.2.2.1.1.2.1 | Availability of DR servers confirmed by Servelec | milestone | 0d | 2015-03-13 | 2015-03-13 | 111FS+5d | 2015-03-13 | 2015-03-13 | 0d | 85.8d | 0d |  |  |  |
| 115 | 4.2.2.1.1.2.2 | Test network connectivity to Servelec hosted environment - DR |  | 0.2d | 2015-03-13 | 2015-03-13 | 81, 114 | 2015-03-13 | 2015-03-13 | 0.2d | 85.8d | 0d |  | IT Infrastructure Lead; HP | 3.2h |
| 116 | 4.2.2.1.1.3 | Network Connectivity Testing completed | milestone | 0d | 2015-03-13 | 2015-03-13 | 115, 112 | 2015-03-13 | 2015-03-13 | 0d | 85.8d |  |  |  |  |
| 117 | 4.2.2.1.2 | **Model Office (HP Internal) Testing** |  | 1d | 2015-03-20 | 2015-03-23 |  | 2015-03-18 | 2015-03-19 | 0.7d | 74.4d |  |  |  | 8h |
| 118 | 4.2.2.1.2.1 | Test Deployment & roll-back of WES component updates |  | 1d | 2015-03-20 | 2015-03-23 | 98, 112 | 2015-03-18 | 2015-03-19 | 0.7d | 74.4d | 0d |  | HP | 8h |
| 119 | 4.2.2.1.2.2 | MO testing completed & ready for UAT | milestone | 0d | 2015-03-23 | 2015-03-23 | 118 | 2015-03-19 | 2015-03-19 | 0d | 74.4d | 0d |  | HP |  |
| 120 | 4.2.2.1.3 | System Testing complete | milestone | 0d | 2015-03-23 | 2015-03-23 | 119, 118 | 2015-03-19 | 2015-03-19 | 0d | 74.4d | 0d |  |  |  |
| 121 | 4.2.2.2 | **User Acceptance Testing - WES Components** |  | 5.4d | 2015-03-23 | 2015-03-30 |  | 2015-03-19 | 2015-03-26 | 5.4d | 74.4d |  |  |  | 44.8h |
| 122 | 4.2.2.2.1 | Perform UAT of Lift & Shift WES components - IM&T |  | 0.3d | 2015-03-23 | 2015-03-23 | 120 | 2015-03-19 | 2015-03-19 | 0.3d | 74.4d | 0d |  | IT Infrastructure Lead; Testing Lead | 4.8h |
| 123 | 4.2.2.2.2 | UAT of WES components signed off - Project Team | milestone | 0d | 2015-03-23 | 2015-03-23 | 122 | 2015-03-19 | 2015-03-19 | 0d | 74.4d | 0d |  |  |  |
| 124 | 4.2.2.2.3 | **Pilot UAT Testing** |  | 5.1d | 2015-03-23 | 2015-03-30 |  | 2015-03-19 | 2015-03-26 | 5.1d | 74.4d |  |  |  | 40h |
| 125 | 4.2.2.2.3.1 | Deploy WES update packages to pilot PCs |  | 0.1d | 2015-03-23 | 2015-03-23 | 123, 82, 87 | 2015-03-19 | 2015-03-19 | 0.1d | 74.4d | 0d |  |  |  |
| 126 | 4.2.2.2.3.2 | Perform UAT of Lift & Shift WES components - pilot users |  | 5d | 2015-03-23 | 2015-03-30 | 125 | 2015-03-19 | 2015-03-26 | 5d | 74.4d | 0d |  | Services | 40h |
| 127 | 4.2.2.2.4 | User Acceptance Testing - WES Components completed | milestone | 0d | 2015-03-30 | 2015-03-30 | 126 | 2015-03-26 | 2015-03-26 | 0d | 74.4d | 0d |  |  |  |
| 128 | 4.3 | Stage 4 Development and Testing Complete | milestone | 0d | 2015-03-30 | 2015-03-30 | 127 | 2015-03-26 | 2015-03-26 | 0d | 74.4d |  |  |  |  |
| 129 | 5 | **STAGE 5 - LIFT AND SHIFT CUTOVER AND GO LIVE** |  | 46.2d | 2015-03-16 | 2015-05-15 |  | 2015-03-16 | 2015-06-05 | 60.2d | 38.8d |  |  |  | 1040h |
| 130 | 5.1 | **TECHNICAL INFRASTRUCTURE** |  | 46.2d | 2015-03-16 | 2015-05-15 |  | 2015-03-16 | 2015-06-05 | 60.2d | 38.8d |  |  |  | 1040h |
| 131 | 5.1.1 | **WES Deployment** |  | 34d | 2015-03-16 | 2015-04-29 |  | 2015-03-16 | 2015-04-30 | 34d | 51d |  |  |  | 800h |
| 132 | 5.1.1.1 | **End User Communications - L&S Go-Live** |  | 4d | 2015-03-16 | 2015-03-20 |  | 2015-03-16 | 2015-03-20 | 4d | 51d |  |  |  | 40h |
| 133 | 5.1.1.1.1 | Agree comms & send to HP |  | 1d | 2015-03-16 | 2015-03-17 |  | 2015-03-16 | 2015-03-17 | 1d | 51d | 0d | start no earlier than 2015-03-16 | IMT Project Manager; IT Infrastructure Lead | 16h |
| 134 | 5.1.1.1.2 | Screen saver comms? |  | 3d | 2015-03-17 | 2015-03-20 | 133 | 2015-03-17 | 2015-03-20 | 3d | 81d |  |  |  |  |
| 135 | 5.1.1.1.3 | Send out Comms to all users |  | 3d | 2015-03-17 | 2015-03-20 | 133 | 2015-03-17 | 2015-03-20 | 3d | 51d | 0d |  | HP | 24h |
| 136 | 5.1.1.1.4 | End User Communications - L&S Go-Live complete | milestone | 0d | 2015-03-20 | 2015-03-20 | 135 | 2015-03-20 | 2015-03-20 | 0d | 51d | 0d |  |  |  |
| 137 | 5.1.1.2 | Deploy WES update packages to BEH estate |  | 30d | 2015-03-20 | 2015-04-29 | 83, 136 | 2015-03-20 | 2015-04-30 | 30d | 51d | 0d |  | HP | 240h |

| ID | WBS | Task | Type | Duration | Start | Finish | Predecessors | Baseline start | Baseline finish | Baseline duration | Total slack | Free slack | Constraint | Resources | Work |
| --- | --- | --- | --- | --- | --- | --- | --- | --- | --- | --- | --- | --- | --- | --- | --- |
| 138 | 5.1.1.3 | **WES deployment device testing** |  | 25d | 2015-03-20 | 2015-04-24 |  | 2015-03-20 | 2015-04-24 | 25d | 56d |  |  |  | 520h |
| 139 | 5.1.1.3.1 | Send HPCA deployment stats - daily by email |  | 25d | 2015-03-20 | 2015-04-24 | 137SS | 2015-03-20 | 2015-04-24 | 25d | 56d |  |  | HP | 200h |
| 140 | 5.1.1.3.2 | **Review WES component deployment with Service Line champions - weekly** |  | 20.2d | 2015-03-26 | 2015-04-23 |  | 2015-03-26 | 2015-04-23 | 20.2d | 56.8d |  |  |  | 16h |
| 141 | 5.1.1.3.2.1 | WES deployment device testing checkpoint - week1 |  | 0.2d | 2015-03-26 | 2015-03-26 | 137SS+4d | 2015-03-26 | 2015-03-26 | 0.2d | 56.8d | 0d |  | IT Infrastructure Lead; Services | 3.2h |
| 142 | 5.1.1.3.2.2 | WES deployment device testing checkpoint - week2 |  | 0.2d | 2015-04-02 | 2015-04-02 | 141SS+5d | 2015-04-02 | 2015-04-02 | 0.2d | 56.8d | 0d |  | IT Infrastructure Lead; Services | 3.2h |
| 143 | 5.1.1.3.2.3 | WES deployment device testing checkpoint - week3 |  | 0.2d | 2015-04-09 | 2015-04-09 | 142SS+5d | 2015-04-09 | 2015-04-09 | 0.2d | 56.8d | 0d |  | IT Infrastructure Lead; Services | 3.2h |
| 144 | 5.1.1.3.2.4 | WES deployment device testing checkpoint - week4 |  | 0.2d | 2015-04-16 | 2015-04-16 | 143SS+5d | 2015-04-16 | 2015-04-16 | 0.2d | 56.8d | 0d |  | IT Infrastructure Lead; Services | 3.2h |
| 145 | 5.1.1.3.2.5 | WES deployment device testing checkpoint - week5 |  | 0.2d | 2015-04-23 | 2015-04-23 | 144SS+5d | 2015-04-23 | 2015-04-23 | 0.2d | 56.8d | 0d | start no earlier than 2015-04-17 | IT Infrastructure Lead; Services | 3.2h |
| 146 | 5.1.1.3.2.6 | WES deployment device testing complete | milestone | 0d | 2015-04-23 | 2015-04-23 | 145 | 2015-04-23 | 2015-04-23 | 0d | 56.8d | 0d |  |  |  |
| 147 | 5.1.1.3.3 | Review deployment progress at weekly project meeting with HP |  | 19d | 2015-03-20 | 2015-04-16 | 137SS | 2015-03-20 | 2015-04-16 | 19d | 62d | 5.2d |  | HP; IT Infrastructure Lead | 304h |
| 148 | 5.1.1.4 | WES Infrastructure upgrades deployed ready for L&S Go-Live | milestone | 0d | 2015-04-23 | 2015-04-23 | 147, 146 | 2015-04-23 | 2015-04-23 | 0d | 56.8d |  |  |  |  |
| 149 | 5.1.2 | **Lift and Shift Cutover Go-Live** |  | 17.2d | 2015-04-24 | 2015-05-15 |  | 2015-04-26 | 2015-06-05 | 30.2d | 38.8d |  |  |  | 240h |
| 150 | 5.1.2.1 | **Trust Print Server Upgrade** |  | 1d | 2015-04-24 | 2015-04-25 |  |  |  |  | 55d |  |  |  |  |
| 151 | 5.1.2.1.1 | Upgrade Trust Print Server configuration |  | 0.4d | 2015-04-24 | 2015-04-24 | 104FS+3d |  |  |  | 55d | 0d |  |  |  |
| 152 | 5.1.2.1.2 | UVT testing of batch printing |  | 0.4d | 2015-04-24 | 2015-04-24 | 151 |  |  |  | 55d | 0d |  |  |  |
| 153 | 5.1.2.1.3 | Trust Print Server UVT signed off |  | 0.2d | 2015-04-24 | 2015-04-25 | 152 |  |  |  | 55d | 0d |  |  |  |
| 154 | 5.1.2.1.4 | Trust Print Server ready for Go-Live | milestone | 0d | 2015-04-25 | 2015-04-25 | 153 |  |  |  | 55d |  |  |  |  |
| 155 | 5.1.2.2 | Confirm Go Live |  | 0.2d | 2015-04-26 | 2015-04-26 |  | 2015-04-26 | 2015-04-26 | 0.2d | 38.8d | 0d | start no earlier than 2015-04-26 |  |  |
| 156 | 5.1.2.3 | Go live with Lift and Shift | milestone | 0d | 2015-04-26 | 2015-04-26 | 155 | 2015-04-26 | 2015-04-26 | 0d | 38.8d | 0d |  |  |  |
| 157 | 5.1.2.4 | **Remove BT RiO Desktop Icons** |  | 15d | 2015-04-26 | 2015-05-15 |  | 2015-04-26 | 2015-06-05 | 30d | 38.8d |  |  |  | 240h |
| 158 | 5.1.2.4.1 | Remove BT RiO program group & icons |  | 15d | 2015-04-26 | 2015-05-15 | 156 | 2015-04-26 | 2015-06-05 | 30d | 38.8d |  |  | HP | 120h |
| 159 | 5.1.2.4.2 | Provide HPCA reports for removing BT RiO icons |  | 15d | 2015-04-26 | 2015-05-15 | 156 | 2015-04-26 | 2015-06-05 | 30d | 38.8d | 0d |  | HP | 120h |
| 160 | 5.1.2.4.3 | BT RiO Desktop Icons removed | milestone | 0d | 2015-05-15 | 2015-05-15 | 159 | 2015-06-05 | 2015-06-05 | 0d | 38.8d | 0d |  | HP |  |
| 161 | 5.2 | Stage 5 Lift and Shift Cutover and Go Live Complete | milestone | 0d | 2015-05-15 | 2015-05-15 | 160 | 2015-06-05 | 2015-06-05 | 0d | 38.8d |  |  |  |  |

| ID | WBS | Task | Type | Duration | Start | Finish | Predecessors | Baseline start | Baseline finish | Baseline duration | Total slack | Free slack | Constraint | Resources | Work |
| --- | --- | --- | --- | --- | --- | --- | --- | --- | --- | --- | --- | --- | --- | --- | --- |
| 162 | 6 | **STAGE 6 - DATA MERGE** |  | 24.5d | 2015-05-01 | 2015-06-04 |  | 2015-04-01 | 2015-06-05 | 48.88d | 5.5d |  |  |  | 246.4h |
| 163 | 6.1 | **DATA MERGE TESTING & TECHNICAL INFRASTRUCTURE** |  | 23.5d | 2015-05-01 | 2015-06-03 |  | 2015-04-14 | 2015-06-05 | 39d | 5.5d |  |  |  | 246.4h |
| 164 | 6.1.1 | **DEVELOPMENT - WES Infrastructure Updates for Merge** |  | 18d | 2015-05-01 | 2015-05-27 |  | 2015-04-14 | 2015-04-15 | 1d | 5.5d |  |  |  | 172h |
| 165 | 6.1.1.1 | **NSSR for HP Changes** |  | 12.5d | 2015-05-01 | 2015-05-19 |  |  |  |  | 5.5d |  |  |  | 132h |
| 166 | 6.1.1.1.1 | Raise NSSR for new desktop shorcuts & print server change |  | 0.5d | 2015-05-01 | 2015-05-01 |  |  |  |  | 5.5d | 0d | start no earlier than 2015-05-01 | IT Infrastructure Lead | 4h |
| 167 | 6.1.1.1.2 | Develop NSSR IA & delivery approach |  | 10d | 2015-05-01 | 2015-05-15 | 166 |  |  |  | 5.5d | 0d |  | HP | 80h |
| 168 | 6.1.1.1.3 | Approve NSSR for new desktop shorcuts & print server change |  | 2d | 2015-05-15 | 2015-05-19 | 167 |  |  |  | 5.5d | 0d |  | BEH; Project Board; Service Manager | 48h |
| 169 | 6.1.1.1.4 | NSSR for HP Changes signed off | milestone | 0d | 2015-05-19 | 2015-05-19 | 168 |  |  |  | 5.5d | 0d |  |  |  |
| 170 | 6.1.1.2 | **Preparation - WES Updates for Merge** |  | 12d | 2015-05-11 | 2015-05-27 |  |  |  |  | 15d |  |  |  | 24h |
| 171 | 6.1.1.2.1 | NSSR288 - BT RiO icons removed | milestone | 0d | 2015-05-15 | 2015-05-15 | 160 |  |  |  | 38.8d | 7.8d |  | HP |  |
| 172 | 6.1.1.2.2 | Create icon for Merge |  | 2d | 2015-05-11 | 2015-05-13 |  |  |  |  | 41d | 10d | start no earlier than 2015-05-11 | IT Infrastructure Lead | 16h |
| 173 | 6.1.1.2.3 | Provide technical information to Comms Lead |  | 0.5d | 2015-05-12 | 2015-05-12 |  |  |  |  | 41.5d | 10.5d | start no earlier than 2015-05-12 | IT Infrastructure Lead | 4h |
| 174 | 6.1.1.2.4 | Merge database instance stood up for WES infra testing | milestone | 0d | 2015-05-27 | 2015-05-27 |  |  |  |  | 3d | 0d | start no earlier than 2015-05-27 | Servelec |  |
| 175 | 6.1.1.2.5 | UAT PCs ready for testing |  | 0.5d | 2015-05-21 | 2015-05-21 |  |  |  |  | 34.5d |  | start no earlier than 2015-05-21 | IT Infrastructure Lead | 4h |
| 176 | 6.1.1.2.6 | Preparation - WES Updates for Merge complete | milestone | 0d | 2015-05-27 | 2015-05-27 | 171, 172, 173, 174 |  |  |  | 31d | 0d |  |  |  |
| 177 | 6.1.1.3 | **WES Desktop Component Software Packaging for Merge** |  | 2d | 2015-05-19 | 2015-05-21 |  | 2015-03-11 | 2015-03-18 | 5.4d | 5.5d |  |  |  | 16h |
| 178 | 6.1.1.3.1 | Complete documentation (DIGS) for area of change |  | 0.5d | 2015-05-19 | 2015-05-20 | 169 | 2015-03-11 | 2015-03-13 | 2d | 5.5d | 0d |  | HP | 4h |
| 179 | 6.1.1.3.2 | Package icon/shortcut |  | 1.5d | 2015-05-20 | 2015-05-21 | 178 | 2015-03-13 | 2015-03-17 | 1.5d | 5.5d | 0d |  | HP | 12h |
| 180 | 6.1.1.3.3 | WES Merge shortcut packaging ready for testing | milestone | 0d | 2015-05-21 | 2015-05-21 | 179 | 2015-03-18 | 2015-03-18 | 0d | 5.5d | 0d |  |  |  |
| 181 | 6.1.1.4 | DEVELOPMENT - WES Infrastructure Updates for Merge complete | milestone | 0d | 2015-05-27 | 2015-05-27 | 180, 176, 169 |  |  |  | 31d |  |  |  |  |
| 182 | 6.1.2 | **TESTING - WES Infrastructure Updates for Merge** |  | 6.3d | 2015-05-21 | 2015-05-29 |  |  |  |  | 5.5d |  |  |  | 26.4h |
| 183 | 6.1.2.1 | **WES Merge Shortcut Testing** |  | 4d | 2015-05-21 | 2015-05-27 |  |  |  |  | 3d |  |  |  | 20h |
| 184 | 6.1.2.1.1 | Test shortcut package deployment in Model Office |  | 0.5d | 2015-05-21 | 2015-05-22 | 180 |  |  |  | 5.5d | 0d |  | HP | 4h |
| 185 | 6.1.2.1.2 | Test shortcut package deployment to UAT PCs |  | 0.5d | 2015-05-22 | 2015-05-22 | 184 |  |  |  | 5.5d | 2.5d |  | HP; IT Infrastructure Lead; Testing Lead | 12h |
| 186 | 6.1.2.1.3 | Test shortcut connectivity on UAT PCs |  | 0.5d | 2015-05-27 | 2015-05-27 | 185, 174 |  |  |  | 3d | 0d |  | Testing Lead | 4h |
| 187 | 6.1.2.1.4 | WES Merge Shortcut Testing complete | milestone | 0d | 2015-05-27 | 2015-05-27 | 186 |  |  |  | 3d | 0d |  |  |  |

| ID | WBS | Task | Type | Duration | Start | Finish | Predecessors | Baseline start | Baseline finish | Baseline duration | Total slack | Free slack | Constraint | Deadline | Resources | Work |
| --- | --- | --- | --- | --- | --- | --- | --- | --- | --- | --- | --- | --- | --- | --- | --- | --- |
| 188 | 6.1.2.2 | **Trust Print Server Upgrade - Dry Run for Merge** |  | 0.8d | 2015-05-29 | 2015-05-29 |  | 2015-04-17 | 2015-04-20 | 0.8d | 0.68d |  |  |  |  | 6.4h |
| 189 | 6.1.2.2.1 | Implement Trust Printer Server configuration changes |  | 0.2d | 2015-05-29 | 2015-05-29 | 169 | 2015-04-17 | 2015-04-17 | 0.2d | 0.68d | 0d | start no earlier than 2015-05-29 | 2015-05-29 | HP | 1.6h |
| 190 | 6.1.2.2.2 | Test Trust Printer Server configuration changes |  | 0.2d | 2015-05-29 | 2015-05-29 | 189 | 2015-04-17 | 2015-04-17 | 0.2d | 5.7d | 0d |  |  | Testing Lead | 1.6h |
| 191 | 6.1.2.2.3 | Roll-back Trust Printer Server configuration changes |  | 0.2d | 2015-05-29 | 2015-05-29 | 190 | 2015-04-17 | 2015-04-17 | 0.2d | 5.7d | 0d |  |  | HP | 1.6h |
| 192 | 6.1.2.2.4 | Update Trust Print Server Upgrade documentation |  | 0.2d | 2015-05-29 | 2015-05-29 | 191 | 2015-04-17 | 2015-04-20 | 0.2d | 5.7d | 0d |  |  | HP | 1.6h |
| 193 | 6.1.2.2.5 | Trust Print Server Upgrade procedure proved | milestone | 0d | 2015-05-29 | 2015-05-29 | 192 | 2015-04-20 | 2015-04-20 | 0d | 5.7d | 0d |  |  |  |  |
| 194 | 6.1.2.3 | TESTING - WES Infrastructure Updates for Merge | milestone | 0d | 2015-05-29 | 2015-05-29 | 193, 187 |  |  |  | 28.2d |  |  |  |  |  |
| 195 | 6.1.3 | **DEPLOYMENT - WES Merge Shortcut** |  | 5d | 2015-05-27 | 2015-06-03 |  |  |  |  | 3d |  |  |  |  | 48h |
| 196 | 6.1.3.1 | Deploy WES Merge shortcut / icon to Trust estate |  | 4d | 2015-05-27 | 2015-06-02 | 187 |  |  |  | 3d | 0d |  |  | HP | 32h |
| 197 | 6.1.3.2 | Device testing at Trust sites |  | 1d | 2015-06-02 | 2015-06-03 | 196 |  |  |  | 3d | 0d |  |  | IT Infrastructure Lead; Testing Lead | 16h |
| 198 | 6.1.3.3 | DEPLOYMENT - WES Merge Shortcut deployed ready for merge cutover | milestone | 0d | 2015-06-03 | 2015-06-03 | 197 |  |  |  | 3d | 0d |  |  |  |  |
| 199 | 6.1.4 | Ready for Merge Cutover | milestone | 0d | 2015-06-03 | 2015-06-03 | 193, 198 | 2015-06-04 | 2015-06-04 | 0d | 3d | 0d |  |  |  |  |
| 200 | 6.2 | End of Stage Review - STAGE 6 |  | 1d | 2015-06-03 | 2015-06-04 | 199 | 2015-06-05 | 2015-06-05 | 1d | 3d | 0d |  |  |  |  |
| 201 | 6.3 | STAGE 6 - MERGE TESTING complete | milestone | 0d | 2015-06-04 | 2015-06-04 | 200 | 2015-06-05 | 2015-06-05 | 0d | 3d | 0d |  |  |  |  |
| 202 | 7 | **STAGE 7 - MERGE CUTOVER & GO LIVE** |  | 1.5d | 2015-06-04 | 2015-06-06 |  | 2015-06-05 | 2015-06-09 | 2d | 3d |  |  |  |  | 14.4h |
| 203 | 7.1 | **Merge Cutover** |  | 1d | 2015-06-04 | 2015-06-05 |  | 2015-06-05 | 2015-06-09 | 2d | 3d |  |  |  |  | 14.4h |
| 204 | 7.1.1 | Remove end-user access to MH & CH databases | milestone | 0d | 2015-06-04 | 2015-06-04 | 201 |  |  |  | 3d | 0d |  |  | Servelec |  |
| 205 | 7.1.2 | **Remove OpenRiO single dB instance desktop icons** |  | 1d | 2015-06-04 | 2015-06-05 |  | 2015-04-26 | 2015-06-05 | 30d | 3d |  |  |  |  | 8h |
| 206 | 7.1.2.1 | Remove OpenRiO icons |  | 1d | 2015-06-04 | 2015-06-05 | 204 | 2015-04-26 | 2015-06-05 | 30d | 3d | 0d |  |  | HP | 8h |
| 207 | 7.1.2.2 | OpenRiO single dB instance desktop icons removed | milestone | 0d | 2015-06-05 | 2015-06-05 | 206 | 2015-06-05 | 2015-06-05 | 0d | 3d | 0d |  |  | HP |  |
| 208 | 7.1.3 | **Trust Print Server Upgrade** |  | 0.8d | 2015-06-04 | 2015-06-05 |  |  |  |  | 3.2d |  |  |  |  | 6.4h |
| 209 | 7.1.3.1 | Upgrade Trust Print Server configuration |  | 0.2d | 2015-06-04 | 2015-06-04 | 204 |  |  |  | 3.2d | 0d |  |  | HP | 1.6h |
| 210 | 7.1.3.2 | System test Trust Print Server |  | 0.2d | 2015-06-04 | 2015-06-05 | 209 |  |  |  | 3.2d | 0d |  |  | Testing Lead | 1.6h |
| 211 | 7.1.3.3 | UVT testing of batch printing |  | 0.4d | 2015-06-05 | 2015-06-05 | 210 |  |  |  | 3.2d | 0d |  |  | Services | 3.2h |
| 212 | 7.1.3.4 | Trust Print Server UVT signed off | milestone | 0d | 2015-06-05 | 2015-06-05 | 211 |  |  |  | 3.2d | 0d |  |  | Services |  |
| 213 | 7.1.3.5 | Trust Print Server ready for Go-Live | milestone | 0d | 2015-06-05 | 2015-06-05 | 212 |  |  |  | 3.2d | 0.2d |  |  |  |  |
| 214 | 7.1.4 | Ready for Go Live* | milestone | 0d | 2015-06-05 | 2015-06-05 | 207, 213 | 2015-06-08 | 2015-06-09 | 1d | 3d | 0d |  |  |  |  |

| ID | WBS | Task | Type | Duration | Start | Finish | Predecessors | Baseline start | Baseline finish | Baseline duration | Total slack | Free slack |
| --- | --- | --- | --- | --- | --- | --- | --- | --- | --- | --- | --- | --- |
| 215 | 7.2 | **Merge Go-Live** |  | 0.5d | 2015-06-05 | 2015-06-06 |  | 2015-06-08 | 2015-06-09 | 1d | 3d |  |
| 216 | 7.2.1 | Confirm Data Merge Go Live |  | 0.5d | 2015-06-05 | 2015-06-06 | 214 | 2015-06-08 | 2015-06-08 | 1d | 3d | 0d |
| 217 | 7.2.2 | Data Merge Go-Live complete | milestone | 0d | 2015-06-06 | 2015-06-06 | 216 | 2015-06-08 | 2015-06-08 | 0d | 3d | 0d |
| 218 | 7.3 | STAGE 7 - MERGE CUTOVER & GO LIVE complete | milestone | 0d | 2015-06-06 | 2015-06-06 | 217 | 2015-06-08 | 2015-06-08 | 0d | 23d |  |
| 219 | 8 | **STAGE 8 - DEPLOYMENT VERIFICATION** |  | 21d | 2015-06-08 | 2015-07-07 |  | 2015-06-08 | 2015-07-07 | 21d | 0d |  |
| 220 | 8.1 | Go-Live Support | manual | 21d | 2015-06-08 | 2015-07-07 |  | 2015-06-08 | 2015-07-07 | 21d |  |  |
| 221 | 8.2 | Monitor & review deployment verification period against agreed criteria | manual | 21d | 2015-06-08 | 2015-07-07 |  | 2015-06-08 | 2015-07-07 | 21d |  |  |
| 222 | 8.3 | Complete Deployment Verification Report | manual | 21d | 2015-06-08 | 2015-07-07 |  | 2015-06-08 | 2015-07-07 | 21d |  |  |
| 223 | 8.4 | Review and approved Deployment Verification Report | manual | 21d | 2015-06-08 | 2015-07-07 |  | 2015-06-08 | 2015-07-07 | 21d |  |  |
| 224 | 8.5 | Deployment Verification Report Signed Off | milestone, manual | 0d | 2015-07-06 | 2015-07-06 |  | 2015-07-06 | 2015-07-06 | 0d |  |  |
| 225 | 8.6 | Confirm Go Live Verification period completed against agreed criteria | manual | 1d | 2015-07-06 | 2015-07-07 |  | 2015-07-06 | 2015-07-07 | 1d |  |  |
| 226 | 8.7 | Go Live Verification (30 days from Ready for Go Live) complete | milestone | 0d | 2015-07-02 | 2015-07-02 | 217FS+20d | 2015-07-06 | 2015-07-06 | 0d | 3d |  |
